# Maison d'éducation

Schedule from ProjectLibre, 2021-01-28 to 2021-03-31.

## Calendars

- Standard: Mon-Fri 08:00-12:00, 13:00-17:00; Sat-Sun off.

## Resources

| Resource | Rate |
| --- | --- |
| Non attribué |  |
| Chef de projet | 100 |
| Spécialiste système | 75 |
| Utilisateur averti |  |
| Analyste programmeur | 50 |

## Schedule

| ID | WBS | Task | Duration | Start | Finish | Predecessors | Complete | Constraint | Resources |
| --- | --- | --- | --- | --- | --- | --- | --- | --- | --- |
| 1 | 1 | **Maison d'éducation** | 44.12d | 2021-01-28 | 2021-03-31 |  | 33% |  |  |
| 2 | 1.1 | Etude préalable | 2.5d | 2021-01-28 | 2021-02-01 |  | 100% |  | Chef de projet |
| 3 | 1.2 | **Sous-projet "placement"** | 25d | 2021-02-01 | 2021-03-08 |  | 65% |  |  |
| 4 | 1.2.1 | EP | 2.5d | 2021-02-01 | 2021-02-03 | 2 | 100% |  | Chef de projet |
| 5 | 1.2.2 | Conception ED "enfant" (ED) | 10d | 2021-02-04 | 2021-02-17 | 4 | 100% |  | Spécialiste système |
| 6 | 1.2.3 | Fichier "enfant" (prog) | 3d | 2021-02-18 | 2021-02-22 | 5 | 100% | start no earlier than 2021-02-18 | Analyste programmeur |
| 7 | 1.2.4 | Affectation enfants-familles (prog) | 5d | 2021-02-23 | 2021-03-01 | 5 | 14% | start no earlier than 2021-02-23 | Analyste programmeur |
| 8 | 1.2.5 | MAJ BD (départ enfants) (prog) | 3d | 2021-03-02 | 2021-03-04 | 5 |  | start no earlier than 2021-03-02 | Analyste programmeur |
| 9 | 1.2.6 | Test placement | 1.5d | 2021-03-05 | 2021-03-08 | 6, 7, 8 |  |  | Utilisateur averti |
| 10 | 1.3 | **Sous-projet "suivi"** | 30.25d | 2021-02-01 | 2021-03-15 |  | 48% |  |  |
| 11 | 1.3.1 | Gestion d'historique "enfant" (ED et prog) | 2.75d | 2021-03-11 | 2021-03-15 | 2 |  | start no earlier than 2021-03-11 | Spécialiste système; Analyste programmeur |
| 12 | 1.3.2 | Planning des visites (ED et prog) | 2.5d | 2021-02-01 | 2021-02-03 | 2 | 100% | start no earlier than 2021-02-01 | Spécialiste système; Analyste programmeur |
| 13 | 1.4 | **Sous-projet "familles d'accueil"** | 32d | 2021-02-04 | 2021-03-22 |  | 23% |  |  |
| 14 | 1.4.1 | EP | 2.5d | 2021-02-04 | 2021-02-08 | 2 | 100% | start no earlier than 2021-02-04 | Chef de projet |
| 15 | 1.4.2 | Conception BD "famille" (ED) | 10d | 2021-02-18 | 2021-03-03 | 14 | 32% | start no earlier than 2021-02-18 | Spécialiste système |
| 16 | 1.4.3 | Fichier "famille" (prog) | 6d | 2021-03-04 | 2021-03-11 | 15 |  | start no earlier than 2021-03-02 | Chef de projet |
| 17 | 1.4.4 | MAJ BD recrutement, renouvellement (prog) | 5d | 2021-03-12 | 2021-03-18 | 15 |  | start no earlier than 2021-03-12 | Chef de projet |
| 18 | 1.4.5 | Test famille | 1.5d | 2021-03-19 | 2021-03-22 | 16, 17 |  | start no earlier than 2021-03-19 | Utilisateur averti |
| 19 | 1.5 | **Sous-projet "allocation"** | 15.38d | 2021-03-04 | 2021-03-25 |  |  | start no earlier than 2021-02-08 |  |
| 20 | 1.5.1 | Conception BD compta (ED) | 5d | 2021-03-04 | 2021-03-10 | 2 |  | start no earlier than 2021-03-04 | Spécialiste système |
| 21 | 1.5.2 | Procédure de versement (prog) | 3d | 2021-03-16 | 2021-03-18 | 20 |  | start no earlier than 2021-03-16 | Analyste programmeur |
| 22 | 1.5.3 | Procédures arrêt (prog) | 2.5d | 2021-03-19 | 2021-03-23 | 20 |  | start no earlier than 2021-03-19 | Analyste programmeur |
| 23 | 1.5.4 | Test allocations | 1.5d | 2021-03-23 | 2021-03-25 | 21, 22 |  | start no earlier than 2021-03-23 | Utilisateur averti |
| 24 | 1.6 | Intégration | 3.75d | 2021-03-25 | 2021-03-31 | 9, 11, 12, 18, 23 |  | start no earlier than 2021-03-25 | Chef de projet; Utilisateur averti; Analyste programmeur; Spécialiste système |
